# p1

Schedule from MS Project, 2013-04-14 to 2014-03-18, costs in €.

## Calendars

- Standard: Mon-Fri 08:00-12:00, 13:00-17:00; Sat-Sun off.

## Resources

| Resource | Rate |
| --- | --- |
| DIRECTOR PROYECTO | 60 |
| INGENIERO AGRONOMO | 48 |
| EXPERTO GIS | 47 |
| ECONOMISTA | 45 |
| SOCIOLOGO | 45 |
| INGENIERO EN MEDIOAMBIENTE | 45 |
| ADMINISTRATIVO | 30 |
| TECNICOS DE APOYO | 35 |

## Schedule

| ID | WBS | Task | Type | Duration | Start | Finish | Predecessors | Resources | Work | Cost |
| --- | --- | --- | --- | --- | --- | --- | --- | --- | --- | --- |
| 1 | 1 | **TOTAL PROYECTO** |  | 242d | 2013-04-15 | 2014-03-18 |  |  | 7078.6h | 318,214.8 |
| 2 | 1.1 | **FASE 1: PREPARACION PARA LA FORMULACION** |  | 31d | 2013-04-15 | 2013-05-27 |  |  | 728.4h | 33,630 |
| 3 | 1.1.1 | INICIO | milestone, manual | 0d | 2013-04-15 | 2013-04-15 |  | DIRECTOR PROYECTO |  |  |
| 4 | 1.1.2 | TERMINOS DE REFERENCIA. Objetivos. Condicionantes del Promotor | manual | 10d | 2013-04-15 | 2013-04-26 | 3 | DIRECTOR PROYECTO [25%]; INGENIERO AGRONOMO [25%]; SOCIOLOGO [25%]; INGENIERO EN MEDIOAMBIENTE [25%]; ECONOMISTA [50%] | 120h | 5,760 |
| 5 | 1.1.3 | FINANCIACION | manual | 7d | 2013-04-15 | 2013-04-23 | 3 | DIRECTOR PROYECTO [15%]; INGENIERO AGRONOMO [25%]; ECONOMISTA [50%]; SOCIOLOGO [25%] | 64.4h | 3,066 |
| 6 | 1.1.4 | COMITÉ DE COORDINACION. Constitución y organización | manual | 5d | 2013-04-15 | 2013-04-19 | 3 | DIRECTOR PROYECTO [25%] | 10h | 600 |
| 7 | 1.1.5 | EQUIPO DE FORMULACION. Recursos humanos y técnicos | manual | 15d | 2013-04-22 | 2013-05-10 | 4SS, 6 | DIRECTOR PROYECTO [25%]; ECONOMISTA [20%]; SOCIOLOGO [10%]; INGENIERO AGRONOMO [10%]; INGENIERO EN MEDIOAMBIENTE [10%]; ADMINISTRATIVO [10%] | 102h | 4,896 |
| 8 | 1.1.6 | METODOLOGIA Y PLAN DE TRABAJO | manual | 10d | 2013-05-06 | 2013-05-17 | 7FS-5d, 5, 4, 6SS | INGENIERO AGRONOMO [50%]; DIRECTOR PROYECTO [50%]; ECONOMISTA; SOCIOLOGO [50%]; INGENIERO EN MEDIOAMBIENTE [50%]; ADMINISTRATIVO [50%] | 280h | 12,720 |
| 9 | 1.1.7 | DOC. Nº1: Fin P.F. | manual | 5d | 2013-05-20 | 2013-05-24 | 8 | DIRECTOR PROYECTO [50%]; ECONOMISTA [50%]; SOCIOLOGO [20%]; INGENIERO EN MEDIOAMBIENTE [20%]; INGENIERO AGRONOMO [20%]; ADMINISTRATIVO | 104h | 4,404 |
| 10 | 1.1.8 | Entrega al PROMOTOR. Doc. nº1 | milestone, manual | 0d | 2013-05-27 | 2013-05-27 | 9 | DIRECTOR PROYECTO [50%] |  |  |
| 11 | 1.1.9 | SEMINARIO DE LANZAMIENTO DEL PROYECTO | manual | 1d | 2013-05-27 | 2013-05-27 | 10 | DIRECTOR PROYECTO; ECONOMISTA; SOCIOLOGO; INGENIERO EN MEDIOAMBIENTE; ADMINISTRATIVO; INGENIERO AGRONOMO | 48h | 2,184 |
| 12 | 1.2 | **FASE 2: ANALISIS Y DIAGNOSTICO** |  | 90d | 2013-05-28 | 2013-09-30 |  |  | 3780.6h | 171,236.8 |
| 13 | 1.2.1 | **ANALISIS ANTECEDENTES** |  | 15d | 2013-05-28 | 2013-06-17 | 11 |  | 315.2h | 14,088 |
| 14 | 1.2.1.1 | POLITICAS Y PROGRAMAS | manual | 10d | 2013-05-28 | 2013-06-10 | 11 | DIRECTOR PROYECTO [20%]; INGENIERO AGRONOMO [50%]; ECONOMISTA [40%]; ADMINISTRATIVO [20%]; INGENIERO EN MEDIOAMBIENTE [20%] | 120h | 5,520 |
| 15 | 1.2.1.2 | MARCO LEGAL | manual | 15d | 2013-05-28 | 2013-06-17 | 11 | DIRECTOR PROYECTO [20%]; INGENIERO AGRONOMO [20%]; ADMINISTRATIVO [50%]; ECONOMISTA [40%] | 156h | 6,552 |
| 16 | 1.2.1.3 | BASES DE DATOS EXISTENTES | manual | 7d | 2013-05-28 | 2013-06-05 | 11 | DIRECTOR PROYECTO [20%]; INGENIERO AGRONOMO [50%] | 39.2h | 2,016 |
| 17 | 1.2.2 | **ANALISIS DEL AREA DEL PROYECTO** |  | 80d | 2013-06-06 | 2013-09-25 | 11, 16 |  | 2081h | 92,248 |
| 18 | 1.2.2.1 | ANALISIS DE RECURSOS NATURALES. INVENTARIO AMBIENTAL | manual | 35d | 2013-04-14 | 2013-05-30 |  | INGENIERO EN MEDIOAMBIENTE; INGENIERO AGRONOMO [50%]; ECONOMISTA [40%]; ADMINISTRATIVO [20%]; EXPERTO GIS [50%] | 728h | 32,620 |
| 19 | 1.2.2.2 | INFRAESTRUCTURAS Y SERVICIOS | manual | 20d | 2013-05-31 | 2013-06-27 | 18 | DIRECTOR PROYECTO [10%]; ADMINISTRATIVO [25%]; SOCIOLOGO [50%]; INGENIERO AGRONOMO | 271h | 12,240 |
| 20 | 1.2.2.3 | ANALISIS DE SECTORES PRODUCTIVOS | manual | 25d | 2013-06-28 | 2013-08-01 | 14, 13, 15, 19 | DIRECTOR PROYECTO [20%]; ECONOMISTA; INGENIERO AGRONOMO [50%]; ADMINISTRATIVO [50%] | 429h | 18,672 |
| 21 | 1.2.2.4 | ANALISIS POBLACIONAL | manual | 20d | 2013-06-06 | 2013-07-03 |  | INGENIERO AGRONOMO [25%]; ADMINISTRATIVO [25%]; SOCIOLOGO | 235h | 10,080 |
| 22 | 1.2.2.5 | SISTEMA GENERAL TERRITORIAL DE INFORMACION | manual | 21d | 2013-06-06 | 2013-07-04 | 16 | INGENIERO AGRONOMO [25%]; ADMINISTRATIVO [25%]; EXPERTO GIS; SOCIOLOGO | 418h | 18,636 |
| 23 | 1.2.3 | **ANALISIS DE AGENTES Y PARTICIPACION** |  | 82d | 2013-05-28 | 2013-09-18 |  |  | 1384.4h | 64,900.8 |
| 24 | 1.2.3.1 | IDENTIFICACIÓN DE AGENTES Y TIPOLOGIA | manual | 9d | 2013-06-06 | 2013-06-18 | 22SS | DIRECTOR PROYECTO [50%]; INGENIERO AGRONOMO [50%]; ADMINISTRATIVO [25%]; SOCIOLOGO | 162h | 7,668 |
| 25 | 1.2.3.2 | ANALISIS DE LA PARTICIPACIÓN: ENCUESTA CON LOS AGENTES | manual | 55d | 2013-06-19 | 2013-09-03 | 24 | DIRECTOR PROYECTO [50%]; INGENIERO AGRONOMO [50%]; ADMINISTRATIVO [25%]; SOCIOLOGO | 976h | 46,188 |
| 26 | 1.2.3.3 | TALLER DE PARTICIPACIÓN AGENTES PUBLICOS | manual | 1d | 2013-06-19 | 2013-06-19 | 25SS | INGENIERO AGRONOMO [50%]; ADMINISTRATIVO [50%]; DIRECTOR PROYECTO [15%]; SOCIOLOGO | 17.2h | 744 |
| 27 | 1.2.3.4 | ANALISIS PROSPECTIVO SIN | manual | 6d | 2013-06-20 | 2013-06-27 | 26 | INGENIERO AGRONOMO [25%]; ECONOMISTA [50%]; SOCIOLOGO [25%]; INGENIERO EN MEDIOAMBIENTE [25%]; DIRECTOR PROYECTO [15%] | 67.2h | 3,168 |
| 28 | 1.2.3.5 | INFORME DE PARTICIPACION: Problemas, necesidades, oportunidades | manual | 9d | 2013-09-04 | 2013-09-16 | 27, 25 | DIRECTOR PROYECTO [30%]; INGENIERO AGRONOMO [25%]; ECONOMISTA [50%]; SOCIOLOGO [25%]; INGENIERO EN MEDIOAMBIENTE [25%]; ADMINISTRATIVO [50%] | 147.6h | 6,480 |
| 29 | 1.2.3.6 | PRESENTACIÓN Y VALIDACION DE CONCLUSIONES | manual | 2d | 2013-09-17 | 2013-09-18 | 28 | DIRECTOR PROYECTO [25%]; INGENIERO AGRONOMO [10%]; ECONOMISTA [20%]; SOCIOLOGO [10%]; ADMINISTRATIVO [25%] | 14.4h | 652.8 |
| 30 | 1.2.4 | CONCLUSIONES Y Doc. Nº2. Presentación al PROMOTOR | milestone, manual | 0d | 2013-09-30 | 2013-09-30 | 29 | DIRECTOR PROYECTO [50%]; INGENIERO AGRONOMO [25%]; ADMINISTRATIVO; ECONOMISTA [50%]; INGENIERO EN MEDIOAMBIENTE [20%] |  |  |
| 31 | 1.2.5 | Doc. nº2. REVISIÓN POR EL PROMOTOR | milestone, manual | 0d | 2013-09-30 | 2013-09-30 | 29, 30 |  |  |  |

| ID | WBS | Task | Type | Duration | Start | Finish | Predecessors | Resources | Work | Cost |
| --- | --- | --- | --- | --- | --- | --- | --- | --- | --- | --- |
| 32 | 1.3 | **FASE 3: DISEÑO DEL PROYECTO** |  | 92d | 2013-10-01 | 2014-02-05 |  |  | 1152h | 53,532 |
| 33 | 1.3.1 | OBJETIVOS Y METAS | manual | 1d | 2013-10-01 | 2013-10-01 | 31 | DIRECTOR PROYECTO; INGENIERO AGRONOMO [50%] | 12h | 672 |
| 34 | 1.3.2 | ALTERNATIVA ESTRATEGICAS: ANÁLISIS Y SELECCIÓN | manual | 7d | 2013-10-02 | 2013-10-10 | 33 | DIRECTOR PROYECTO [50%]; INGENIERO AGRONOMO; ECONOMISTA; INGENIERO EN MEDIOAMBIENTE [50%] | 168h | 8,148 |
| 35 | 1.3.3 | FORMULACION DE LOS COMPONENTES | manual | 60d | 2013-10-11 | 2014-01-02 | 34 | INGENIERO AGRONOMO [50%]; ECONOMISTA [50%]; INGENIERO EN MEDIOAMBIENTE [50%] | 720h | 33,120 |
| 36 | 1.3.4 | DISEÑO DE LA ORGANIZACIÓN | manual | 10d | 2014-01-03 | 2014-01-16 | 35 | INGENIERO AGRONOMO [50%]; ECONOMISTA [50%]; INGENIERO EN MEDIOAMBIENTE [50%] | 120h | 5,520 |
| 37 | 1.3.5 | SISTEMA DE SEGUIMIENTO Y EVALUACION. Programación de la ejecución. | manual | 7d | 2014-01-17 | 2014-01-27 | 36, 35 | INGENIERO AGRONOMO [50%]; ECONOMISTA [50%]; INGENIERO EN MEDIOAMBIENTE [50%] | 84h | 3,864 |
| 38 | 1.3.6 | PRESUPUESTACION | manual | 4d | 2014-01-17 | 2014-01-22 | 35, 36 | INGENIERO AGRONOMO [50%]; ECONOMISTA [50%]; INGENIERO EN MEDIOAMBIENTE [50%] | 48h | 2,208 |
| 39 | 1.3.7 | Doc. Nº 3. Entrega al PROMOTOR | milestone, manual | 0d | 2014-01-23 | 2014-01-23 | 38 | DIRECTOR PROYECTO |  |  |
| 40 | 1.3.8 | Doc. Nº 3. REVISION POR EL PROMOTOR | manual | 10d | 2014-01-23 | 2014-02-05 | 39 |  |  |  |
| 41 | 1.4 | **FASE 4: EVALUACION MULTICRITERIO** |  | 15d | 2014-02-06 | 2014-02-26 |  |  | 516h | 23,860 |
| 42 | 1.4.1 | EVALUACION ECONOMICO-FINANCIERA | manual | 10d | 2014-02-06 | 2014-02-19 | 40 | DIRECTOR PROYECTO [25%]; INGENIERO AGRONOMO [50%]; ECONOMISTA | 120h | 5,760 |
| 43 | 1.4.2 | EVALUACION SOCIAL Y CULTURAL | manual | 10d | 2014-02-06 | 2014-02-19 | 40 | DIRECTOR PROYECTO [25%]; INGENIERO AGRONOMO [50%]; ECONOMISTA [15%]; SOCIOLOGO | 132h | 6,300 |
| 44 | 1.4.3 | EVALUACION AMBIENTAL | manual | 10d | 2014-02-06 | 2014-02-19 | 40 | DIRECTOR PROYECTO [25%]; INGENIERO AGRONOMO [50%]; ECONOMISTA [15%]; INGENIERO EN MEDIOAMBIENTE | 132h | 6,300 |
| 45 | 1.4.4 | EVALUACION DE RIESGOS, SEGURIDAD Y SALUD DEL PROYECTO | manual | 10d | 2014-02-06 | 2014-02-19 | 40 | DIRECTOR PROYECTO [25%]; INGENIERO AGRONOMO [50%]; ECONOMISTA [15%]; TECNICOS DE APOYO | 132h | 5,500 |
| 46 | 1.4.5 | Entrega Doc. nº 4. VIABILIDAD Y SOSTENIBLIDAD | milestone, manual | 0d | 2014-02-20 | 2014-02-20 | 45 |  |  |  |
| 47 | 1.4.6 | Revisión Doc. nº 4 | manual | 5d | 2014-02-20 | 2014-02-26 | 42, 43, 44 |  |  |  |
| 48 | 1.5 | **FAE 5: DOCUMENTACION** |  | 10d | 2014-02-27 | 2014-03-12 |  |  | 901.6h | 35,956 |
| 49 | 1.5.1 | MEMORIA | manual | 6d | 2014-02-27 | 2014-03-06 | 47 | INGENIERO AGRONOMO [50%]; ECONOMISTA [25%]; DIRECTOR PROYECTO [10%]; TECNICOS DE APOYO | 71.8h | 2,844 |
| 50 | 1.5.2 | ANEJOS A LA MEMORIA | manual | 10d | 2014-02-27 | 2014-03-12 | 47 | INGENIERO AGRONOMO [50%]; ECONOMISTA [25%]; DIRECTOR PROYECTO [10%]; INGENIERO EN MEDIOAMBIENTE [50%]; ADMINISTRATIVO [50%]; TECNICOS DE APOYO | 203h | 7,900 |
| 51 | 1.5.3 | PLANOS | manual | 10d | 2014-02-27 | 2014-03-12 | 47 | INGENIERO AGRONOMO [50%]; ECONOMISTA [25%]; DIRECTOR PROYECTO [10%]; INGENIERO EN MEDIOAMBIENTE [50%]; ADMINISTRATIVO [50%]; EXPERTO GIS; TECNICOS DE APOYO | 283h | 11,660 |
| 52 | 1.5.4 | PLIEGO DE CONDICIONES | manual | 3d | 2014-02-27 | 2014-03-03 | 47 | INGENIERO AGRONOMO [50%]; ECONOMISTA [25%]; DIRECTOR PROYECTO [10%]; INGENIERO EN MEDIOAMBIENTE [50%]; ADMINISTRATIVO [50%]; TECNICOS DE APOYO | 59.4h | 2,298 |
| 53 | 1.5.5 | PRESUPUESTO | manual | 3d | 2014-02-27 | 2014-03-03 | 47 | ECONOMISTA [25%]; INGENIERO AGRONOMO [50%]; DIRECTOR PROYECTO [10%]; INGENIERO EN MEDIOAMBIENTE [50%]; ADMINISTRATIVO [50%]; TECNICOS DE APOYO | 62.4h | 2,442 |
| 54 | 1.5.6 | ESTUDIO DE SEGURIDAD Y SALUD | manual | 10d | 2014-02-27 | 2014-03-12 | 47 | INGENIERO AGRONOMO [50%]; ECONOMISTA [25%]; DIRECTOR PROYECTO [10%]; INGENIERO EN MEDIOAMBIENTE [50%]; ADMINISTRATIVO [50%]; TECNICOS DE APOYO | 222h | 8,812 |
| 55 | 1.5.7 | Entrega del proyecto | milestone, manual | 0d | 2014-03-12 | 2014-03-12 | 54, 49, 50, 51, 52, 53 |  |  |  |
